# XING_PRO320009_A0

Schedule from MS Project, 2020-10-14 to 2021-01-22.

## Calendars

- Base_FRD: Mon-Fri 08:30-12:00, 13:00-17:00; Sat-Sun off. Exceptions (off unless hours are given): 2020-11-23 (Soberanía Nacional), 2020-12-07 to 2020-12-08 (Feriado Turístico), 2020-12-25 (Navidad), 2021-01-01 (Año Nuevo).

## Resources

| Resource |
| --- |
| FRD |
| CRJ |
| CCA |
| GAJ |
| EMR |

## Schedule

| ID | WBS | Task | Type | Duration | Start | Finish | Predecessors | Baseline start | Baseline finish | Baseline duration | Total slack | Free slack | Constraint | Resources | Work |
| --- | --- | --- | --- | --- | --- | --- | --- | --- | --- | --- | --- | --- | --- | --- | --- |
| 1 | 1 | **INGENIERÍA/PLACA SIMOTION 4** |  | 36.38d | 2020-10-14 | 2020-12-10 |  | 2020-10-14 | 2020-12-02 | 32.38d? | 9.38d |  |  |  | 152h |
| 2 | 1.1 | Selección materiales principales (SIEMENS) |  | 1d | 2020-10-14 | 2020-10-15 |  | 2020-10-14 | 2020-10-16 | 2d | 60.88d | 0d |  | CRJ | 8h |
| 3 | 1.2 | VISITA A PLANTA |  | 1d | 2020-10-28 | 2020-10-29 |  | 2020-10-28 | 2020-10-29 | 1d | 0d |  | start no earlier than 2020-10-28 | EMR; CRJ; FRD; GAJ | 32h |
| 4 | 1.3 | Selección materiales menores |  | 3d | 2020-10-29 | 2020-11-03 | 3 | 2020-10-29 | 2020-11-03 | 3d | 0d |  |  | CRJ | 24h |
| 5 | 1.4 | Compra de materiales Siemens |  | 1d | 2020-10-15 | 2020-10-16 | 2 | 2020-10-16 | 2020-10-19 | 1d | 60.88d |  |  | CCA | 8h |
| 6 | 1.5 | Compra materiales menores |  | 1d | 2020-11-03 | 2020-11-04 | 4 | 2020-11-03 | 2020-11-04 | 1d? | 0d |  |  | CCA | 8h |
| 7 | 1.6 | Recepción materiales | milestone | 0d | 2020-11-19 | 2020-11-19 | 6FS+10d | 2020-11-19 | 2020-11-19 | 0d | 0d |  |  |  |  |
| 8 | 1.7 | Confección de planos eléctricos |  | 3d | 2020-11-19 | 2020-11-25 | 7 | 2020-11-19 | 2020-11-25 | 3d | 0d |  |  | CRJ | 24h |
| 9 | 1.8 | Armado de tablero eléctrico (Placa Simotion 4) |  | 4d | 2020-11-25 | 2020-12-01 | 8 | 2020-11-25 | 2020-12-01 | 4d | 0d |  |  | GAJ | 32h |
| 10 | 1.9 | FAT Simotion 4 |  | 1d | 2020-12-01 | 2020-12-02 | 9 | 2020-12-01 | 2020-12-02 | 1d | 0d |  |  | GAJ; CRJ | 16h |
| 11 | 1.10 | Placa Simotion 4 OK | milestone | 0d | 2020-12-02 | 2020-12-02 | 10 | 2020-12-02 | 2020-12-02 | 0d | 0d |  |  |  |  |
| 12 | 1.11 | Entrega placa Simotion 4 |  | 1d | 2020-12-09 | 2020-12-10 | 24, 11 |  |  |  | 0d |  |  |  |  |
| 13 | 2 | **SOFTWARE SIMOTION 4** |  | 35.38d | 2020-10-14 | 2020-12-09 |  | 2020-10-14 | 2020-12-09 | 35.38d? | 0d |  |  |  | 152h |
| 14 | 2.1 | Acondicionar versiones de software |  | 3d | 2020-10-14 | 2020-10-19 |  | 2020-10-14 | 2020-10-19 | 3d | 16.38d | 0d |  | FRD | 24h |
| 15 | 2.2 | Abrir y estudiar programa original de BSL |  | 4h | 2020-10-19 | 2020-10-19 | 14 | 2020-10-19 | 2020-10-19 | 4h | 16.38d | 0d |  | FRD | 4h |
| 16 | 2.3 | Abrir y estudiar programa original de CS |  | 4h | 2020-10-19 | 2020-10-20 | 15 | 2020-10-19 | 2020-10-20 | 4h | 16.38d | 0d |  | FRD | 4h |
| 17 | 2.4 | Abrir y estudiar Programa ejemplo de Simotion |  | 2d | 2020-10-20 | 2020-10-22 | 16 | 2020-10-20 | 2020-10-22 | 2d | 16.38d | 0d |  | FRD | 16h |
| 18 | 2.5 | **Programación Simotion 4** |  | 29.38d | 2020-10-22 | 2020-12-09 | 17 | 2020-10-22 | 2020-12-09 | 29.38d? | 0d |  |  |  | 104h |
| 19 | 2.5.1 | Estudio y configuración doble comunicación |  | 1d | 2020-10-22 | 2020-10-23 |  | 2020-10-22 | 2020-10-23 | 1d | 16.38d | 0d |  | FRD | 8h |
| 20 | 2.5.2 | Configuración Hw |  | 1d | 2020-10-23 | 2020-10-26 | 19 | 2020-10-22 | 2020-10-23 | 1d | 16.38d | 0d |  | FRD | 8h |
| 21 | 2.5.3 | Definición estructura de programa |  | 1d | 2020-10-26 | 2020-10-27 | 20 | 2020-10-22 | 2020-10-23 | 1d | 16.38d | 0d |  | FRD | 8h |
| 22 | 2.5.4 | Programación Simotion 4 |  | 7d | 2020-10-27 | 2020-11-06 | 21 | 2020-10-23 | 2020-11-02 | 6d | 16.38d |  |  | FRD | 56h |
| 23 | 2.5.5 | Pruebas de software |  | 3d | 2020-12-02 | 2020-12-09 | 22, 11 | 2020-12-02 | 2020-12-09 | 3d | 0d |  |  | FRD | 24h |
| 24 | 2.5.6 | Programa Simotion 4 OK | milestone | 0d | 2020-12-09 | 2020-12-09 | 23 | 2020-12-09 | 2020-12-09 | 0d | 0d |  |  |  |  |

| ID | WBS | Task | Type | Duration | Start | Finish | Predecessors | Baseline start | Baseline finish | Baseline duration | Total slack | Free slack | Resources | Work |
| --- | --- | --- | --- | --- | --- | --- | --- | --- | --- | --- | --- | --- | --- | --- |
| 25 | 3 | **PEM Simotion 4** |  | 10.5d | 2020-12-10 | 2020-12-29 |  | 2020-10-14 | 2020-12-14 | 38.38d | 0d |  |  | 88h |
| 26 | 3.1 | Montaje y conexionado |  | 2d | 2020-12-10 | 2020-12-14 | 12 | 2020-12-10 | 2020-12-14 | 2d | 0d |  | FRD | 16h |
| 27 | 3.2 | SAT |  | 1d | 2020-12-15 | 2020-12-16 | 26 | 2020-10-14 | 2020-10-15 | 1d | 0d |  | FRD | 8h |
| 28 | 3.3 | Carga modificaciones PLC BSL |  | 2h | 2020-12-16 | 2020-12-16 | 27 | 2020-10-15 | 2020-10-15 | 2h | 23d | 0d | FRD | 2h |
| 29 | 3.4 | Pruebas comunicación PLC BSL-Simotion 4 |  | 2h | 2020-12-16 | 2020-12-16 | 28 | 2020-10-15 | 2020-10-15 | 2h | 23d |  | FRD | 2h |
| 30 | 3.5 | Carga modificaciones PLC CS |  | 2h | 2020-12-16 | 2020-12-16 | 27 | 2020-10-15 | 2020-10-15 | 2h | 0d |  | FRD | 2h |
| 31 | 3.6 | Pruebas comunicación PLC CS-Simotion 4 |  | 2h | 2020-12-16 | 2020-12-16 | 30 | 2020-10-15 | 2020-10-15 | 2h | 0d |  | FRD | 2h |
| 32 | 3.7 | Pruebas de movimientos Simotion |  | 1d | 2020-12-16 | 2020-12-17 | 31 |  |  |  | 0d |  | FRD | 8h |
| 33 | 3.8 | Pruebas en vacío |  | 2d | 2020-12-17 | 2020-12-21 | 32 |  |  |  | 0d |  | FRD | 16h |
| 34 | 3.9 | Pruebas "Barra fantasma" |  | 1d | 2020-12-21 | 2020-12-22 | 33 |  |  |  | 0d |  | FRD | 8h |
| 35 | 3.10 | Pruebas con material |  | 3d | 2020-12-22 | 2020-12-29 | 34 |  |  |  | 0d |  | FRD | 24h |
| 36 | 4 | **INGENIERÍA/PLACA SIMOTION 2** |  | 33.38d | 2020-10-14 | 2020-12-03 |  | 2020-10-14 | 2020-12-02 | 32.38d? | 29.38d |  |  | 120h |
| 37 | 4.1 | Selección materiales principales (SIEMENS) |  | 1d | 2020-10-14 | 2020-10-15 |  | 2020-10-14 | 2020-10-16 | 2d | 60.88d | 0d | CRJ | 8h |
| 38 | 4.2 | Selección materiales menores |  | 3d | 2020-10-29 | 2020-11-03 | 3 | 2020-10-29 | 2020-11-03 | 3d | 19d | 0d | CRJ | 24h |
| 39 | 4.3 | Compra de materiales Siemens |  | 1d | 2020-10-15 | 2020-10-16 | 37 | 2020-10-16 | 2020-10-19 | 1d | 60.88d |  | CCA | 8h |
| 40 | 4.4 | Compra materiales menores |  | 1d | 2020-11-03 | 2020-11-04 | 38 | 2020-11-03 | 2020-11-04 | 1d? | 19d | 0d | CCA | 8h |
| 41 | 4.5 | Recepción materiales | milestone | 0d | 2020-11-19 | 2020-11-19 | 40FS+10d | 2020-11-19 | 2020-11-19 | 0d | 19d | 0d |  |  |
| 42 | 4.6 | Confección de planos eléctricos |  | 3d | 2020-11-19 | 2020-11-25 | 41 | 2020-11-19 | 2020-11-25 | 3d | 19d | 0d | CRJ | 24h |
| 43 | 4.7 | Armado de tablero eléctrico (Placa Simotion 2) |  | 4d | 2020-11-25 | 2020-12-01 | 42 | 2020-11-25 | 2020-12-01 | 4d | 19d | 0d | GAJ | 32h |
| 44 | 4.8 | FAT Simotion 2 |  | 1d | 2020-12-01 | 2020-12-02 | 43 | 2020-12-01 | 2020-12-02 | 1d | 19d | 0d | GAJ; CRJ | 16h |
| 45 | 4.9 | Placa Simotion 2 OK | milestone | 0d | 2020-12-02 | 2020-12-02 | 44 | 2020-12-02 | 2020-12-02 | 0d | 19d | 0d |  |  |
| 46 | 4.10 | Entrega placa Simotion 2 |  | 1d | 2020-12-02 | 2020-12-03 | 45 |  |  |  | 19d | 0d |  |  |
| 47 | 5 | **SOFTWARE SIMOTION 2** |  | 16d? | 2020-12-29 | 2021-01-22 |  | 2020-10-14 | 2020-12-09 | 35.38d? | 0d |  |  | 120h |
| 48 | 5.1 | Abrir y estudiar programa original de SH18BM |  | 1d | 2020-12-29 | 2020-12-30 | 35 | 2020-10-19 | 2020-10-20 | 4h | 0d |  | FRD | 8h |
| 49 | 5.2 | Abrir y estudiar programa original de SH1B |  | 1d | 2020-12-30 | 2020-12-31 | 48 | 2020-10-20 | 2020-10-22 | 2d | 0d |  | FRD | 8h |
| 50 | 5.3 | Abrir y estudiar programa original de SH1B |  | 1d? | 2020-12-31 | 2021-01-04 | 49 |  |  |  | 0d |  |  |  |

| ID | WBS | Task | Type | Duration | Start | Finish | Predecessors | Baseline start | Baseline finish | Baseline duration | Total slack | Free slack | Resources | Work |
| --- | --- | --- | --- | --- | --- | --- | --- | --- | --- | --- | --- | --- | --- | --- |
| 51 | 5.4 | **Programación Simotion 2** |  | 13d | 2021-01-04 | 2021-01-22 | 50 | 2020-10-22 | 2020-12-09 | 29.38d? | 0d |  |  | 104h |
| 52 | 5.4.1 | Estudio y configuración doble comunicación |  | 1d | 2021-01-04 | 2021-01-05 |  | 2020-10-22 | 2020-10-23 | 1d | 0d |  | FRD | 8h |
| 53 | 5.4.2 | Configuración Hw |  | 1d | 2021-01-05 | 2021-01-06 | 52 | 2020-10-22 | 2020-10-23 | 1d | 0d |  | FRD | 8h |
| 54 | 5.4.3 | Definición estructura de programa |  | 1d | 2021-01-06 | 2021-01-07 | 53 | 2020-10-22 | 2020-10-23 | 1d | 0d |  | FRD | 8h |
| 55 | 5.4.4 | Programación Simotion 2 |  | 7d | 2021-01-07 | 2021-01-18 | 54 | 2020-10-23 | 2020-11-02 | 6d | 0d |  | FRD | 56h |
| 56 | 5.4.5 | Pruebas de software |  | 3d | 2021-01-18 | 2021-01-22 | 45, 55 | 2020-12-02 | 2020-12-09 | 3d | 0d |  | FRD | 24h |
| 57 | 5.4.6 | Programa Simotion 2 OK | milestone | 0d | 2021-01-22 | 2021-01-22 | 56 | 2020-12-09 | 2020-12-09 | 0d | 0d |  |  |  |
| 58 | 6 | **PEM Simotion 2** |  | 21d | 2020-12-03 | 2021-01-11 |  | 2020-10-14 | 2020-12-14 | 38.38d | 8.5d |  |  | 84h |
| 59 | 6.1 | Montaje y conexionado |  | 2d | 2020-12-03 | 2020-12-09 | 46 | 2020-12-10 | 2020-12-14 | 2d | 19d | 0d | FRD | 16h |
| 60 | 6.2 | SAT |  | 1d | 2020-12-09 | 2020-12-10 | 59 | 2020-10-14 | 2020-10-15 | 1d | 19d | 10.5d | FRD | 8h |
| 61 | 6.3 | Carga modificaciones PLC CS |  | 2h | 2020-12-29 | 2020-12-29 | 60, 35 | 2020-10-15 | 2020-10-15 | 2h | 8.5d | 0d | FRD | 2h |
| 62 | 6.4 | Pruebas comunicación PLC CS-Simotion 2 |  | 2h | 2020-12-29 | 2020-12-29 | 61 | 2020-10-15 | 2020-10-15 | 2h | 8.5d | 0d | FRD | 2h |
| 63 | 6.5 | Pruebas de movimientos Simotion |  | 1d | 2020-12-29 | 2020-12-30 | 62 |  |  |  | 8.5d | 0d | FRD | 8h |
| 64 | 6.6 | Pruebas en vacío |  | 2d | 2020-12-30 | 2021-01-04 | 63 |  |  |  | 8.5d | 0d | FRD | 16h |
| 65 | 6.7 | Pruebas "Barra fantasma" |  | 1d | 2021-01-04 | 2021-01-05 | 64 |  |  |  | 8.5d | 0d | FRD | 8h |
| 66 | 6.8 | Pruebas con material |  | 3d | 2021-01-05 | 2021-01-11 | 65 |  |  |  | 8.5d |  | FRD | 24h |
