# XING_PRO320009_A0

Schedule from MS Project, 2020-10-14 to 2021-04-26, A marks actual dates.

## Calendars

- Base_FRD: Mon-Fri 08:30-12:00, 13:00-17:00; Sat-Sun off. Exceptions (off unless hours are given): 2020-11-23 (Soberanía Nacional), 2020-12-07 to 2020-12-08 (Feriado Turístico), 2020-12-25 (Navidad), 2021-01-01 (Año Nuevo), 2021-02-15 to 2021-02-16 (Carnaval), 2021-03-24 (Día de la Memoria), 2021-04-02 (Viernes Santo/Malvinas).

## Resources

| Resource |
| --- |
| FRD |
| CRJ |
| CCA |
| GAJ |
| EMR |
| CRJGAJ |
| CRL |

## Schedule

| ID | WBS | Task | Type | Duration | Start | Finish | Predecessors | Complete | Remaining | Baseline start | Baseline finish | Baseline duration | Total slack | Free slack | Constraint | Resources | Work | Actual work |
| --- | --- | --- | --- | --- | --- | --- | --- | --- | --- | --- | --- | --- | --- | --- | --- | --- | --- | --- |
| 1 | 1 | **Relevo Previo** |  | 42d | 2020-10-14 A | 2020-12-18 |  | 47% | 22.31d |  |  |  | 42.56d |  |  |  | 88h | 30h |
| 2 | 1.1 | Selección materiales principales (SIEMENS) |  | 1d | 2020-10-14 A | 2020-10-15 A |  | 100% |  | 2020-10-14 | 2020-10-16 | 2d |  |  |  | CRJ | 8h | 8h |
| 3 | 1.2 | Compra de materiales Siemens |  | 1d | 2020-10-15 A | 2020-10-16 | 2 | 50% | 0.5d | 2020-10-16 | 2020-10-19 | 1d | 42.56d | 0d |  | CCA | 8h | 4h |
| 4 | 1.3 | VISITA A PLANTA |  | 1d | 2020-11-04 | 2020-11-05 |  |  |  | 2020-10-28 | 2020-10-29 | 1d | 2d | 0d | start no earlier than 2020-11-04 | EMR; CRJ; FRD; GAJ | 32h |  |
| 5 | 1.4 | Selección materiales menores |  | 4d | 2020-11-05 A | 2020-11-11 | 4 | 50% | 2d | 2020-10-29 | 2020-11-03 | 3d | 0.25d | 0d |  | CRJ | 32h | 16h |
| 6 | 1.5 | Compra materiales menores |  | 1d | 2020-11-11 A | 2020-11-12 | 5 | 25% | 0.75d | 2020-11-03 | 2020-11-04 | 1d? | 52.5d | 0d |  | CCA | 8h | 2h |
| 7 | 1.6 | Recepción materiales menores | milestone | 0d | 2020-11-30 | 2020-11-30 | 6FS+10d |  |  | 2020-11-19 | 2020-11-19 | 0d | 35.12d | 0d |  |  |  |  |
| 8 | 1.7 | Recepción de materiales Siemens | milestone | 0d | 2020-12-18 | 2020-12-18 | 3FS+2mo |  |  |  |  |  | 25.19d | 0d | start no earlier than 2020-12-18 |  |  |  |
| 9 | 2 | **INGENIERÍA/PLACA SIMOTION** |  | 27.94d | 2020-11-11 A | 2020-12-29 |  | 13% | 24.28d | 2020-10-14 | 2020-12-02 | 32.38d? | 74.06d |  |  |  | 248h | 22h |
| 10 | 2.1 | Confección de planos eléctricos |  | 11d | 2020-11-11 A | 2020-11-30 | 5 | 25% | 8.25d | 2020-11-19 | 2020-11-25 | 3d | 91d |  |  | CRJ | 88h | 22h |
| 11 | 2.2 | Armado de tableros eléctricos con materiales menores |  | 5d | 2020-11-30 | 2020-12-09 | 7 |  |  | 2020-11-25 | 2020-12-01 | 4d | 52.5d | 9.94d |  | GAJ; CRJ | 80h |  |
| 12 | 2.3 | Montaje de materiales Siemens |  | 3d | 2020-12-18 | 2020-12-24 | 8 |  |  |  |  |  | 42.56d | 0d |  | GAJ; CRJ | 48h |  |
| 13 | 2.4 | FAT |  | 1d | 2020-12-24 | 2020-12-28 | 11, 12 |  |  | 2020-12-01 | 2020-12-02 | 1d | 42.56d | 0d |  | GAJ; CRJ | 16h |  |
| 14 | 2.5 | Placas Simotion OK | milestone | 0d | 2020-12-28 | 2020-12-28 | 13 |  |  | 2020-12-02 | 2020-12-02 | 0d | 42.56d | 0d |  | GAJ; CRJ |  |  |
| 15 | 2.6 | Entrega placas Simotion |  | 1d | 2020-12-28 | 2020-12-29 | 27, 14 |  |  |  |  |  | 42.56d | 2.69d |  | GAJ; CRJ | 16h |  |
| 16 | 3 | **SOFTWARE SIMOTION 4** |  | 33.81d | 2020-11-02 | 2020-12-28 |  |  |  | 2020-10-14 | 2020-12-09 | 35.38d? | 0d |  |  |  | 152h |  |
| 17 | 3.1 | Acondicionar versiones de software |  | 3d | 2020-11-02 | 2020-11-06 |  |  |  | 2020-10-14 | 2020-10-19 | 3d | 0d |  | start no earlier than 2020-11-02 | FRD | 24h |  |
| 18 | 3.2 | Abrir y estudiar programa original de BSL |  | 4h | 2020-11-06 | 2020-11-06 | 17 |  |  | 2020-10-19 | 2020-10-19 | 4h | 0d |  |  | FRD | 4h |  |
| 19 | 3.3 | Abrir y estudiar programa original de CS |  | 4h | 2020-11-06 | 2020-11-09 | 18 |  |  | 2020-10-19 | 2020-10-20 | 4h | 0d |  |  | FRD | 4h |  |
| 20 | 3.4 | Abrir y estudiar Programa ejemplo de Simotion |  | 2d | 2020-11-09 | 2020-11-11 | 19 |  |  | 2020-10-20 | 2020-10-22 | 2d | 0d |  |  | FRD | 16h |  |
| 21 | 3.5 | **Programación Simotion 4** |  | 26.81d | 2020-11-11 | 2020-12-28 | 20 |  |  | 2020-10-22 | 2020-12-09 | 29.38d? | 0d |  |  |  | 104h |  |
| 22 | 3.5.1 | Estudio y configuración doble comunicación |  | 1d | 2020-11-11 | 2020-11-12 |  |  |  | 2020-10-22 | 2020-10-23 | 1d | 0d |  |  | FRD | 8h |  |
| 23 | 3.5.2 | Configuración Hw |  | 1d | 2020-11-12 | 2020-11-13 | 22 |  |  | 2020-10-22 | 2020-10-23 | 1d | 0d |  |  | FRD | 8h |  |
| 24 | 3.5.3 | Definición estructura de programa |  | 1d | 2020-11-13 | 2020-11-16 | 23 |  |  | 2020-10-22 | 2020-10-23 | 1d | 0d |  |  | FRD | 8h |  |
| 25 | 3.5.4 | Programación Simotion 4 |  | 7d | 2020-11-16 | 2020-11-27 | 24 |  |  | 2020-10-23 | 2020-11-02 | 6d | 0d |  | finish no earlier than 2020-11-26 | FRD | 56h |  |
| 26 | 3.5.5 | Pruebas de software |  | 3d | 2020-11-27 | 2020-12-02 | 25 |  |  | 2020-12-02 | 2020-12-09 | 3d | 0d |  |  | FRD | 24h |  |
| 27 | 3.5.6 | Programa Simotion 4 OK | milestone | 0d | 2020-12-28 | 2020-12-28 | 14, 26 |  |  | 2020-12-09 | 2020-12-09 | 0d | 42.56d | 0d |  |  |  |  |

| ID | WBS | Task | Type | Duration | Start | Finish | Predecessors | Baseline start | Baseline finish | Baseline duration | Total slack | Free slack | Constraint | Resources | Work |
| --- | --- | --- | --- | --- | --- | --- | --- | --- | --- | --- | --- | --- | --- | --- | --- |
| 28 | 4 | **PEM Simotion 4** |  | 10d | 2021-01-04 | 2021-01-18 |  | 2020-10-14 | 2020-12-14 | 38.38d | 39.88d |  |  |  | 80h |
| 29 | 4.1 | Montaje y conexionado |  | 1d | 2021-01-04 | 2021-01-05 | 15 | 2020-12-10 | 2020-12-14 | 2d | 39.88d | 0d | start no earlier than 2021-01-04 | CRJ | 8h |
| 30 | 4.2 | SAT |  | 1d | 2021-01-05 | 2021-01-06 | 29 | 2020-10-14 | 2020-10-15 | 1d | 39.88d | 0d |  | CRJ | 8h |
| 31 | 4.3 | Carga modificaciones PLC BSL |  | 2h | 2021-01-06 | 2021-01-06 | 30 | 2020-10-15 | 2020-10-15 | 2h | 39.88d | 0d |  | FRD | 2h |
| 32 | 4.4 | Pruebas comunicación PLC BSL-Simotion 4 |  | 2h | 2021-01-06 | 2021-01-06 | 31 | 2020-10-15 | 2020-10-15 | 2h | 39.88d | 0d |  | FRD | 2h |
| 33 | 4.5 | Carga modificaciones PLC CS |  | 2h | 2021-01-06 | 2021-01-06 | 32 | 2020-10-15 | 2020-10-15 | 2h | 39.88d | 0d |  | FRD | 2h |
| 34 | 4.6 | Pruebas comunicación PLC CS-Simotion 4 |  | 2h | 2021-01-07 | 2021-01-07 | 33 | 2020-10-15 | 2020-10-15 | 2h | 39.88d | 0d |  | FRD | 2h |
| 35 | 4.7 | Pruebas de movimientos Simotion |  | 1d | 2021-01-07 | 2021-01-08 | 34 |  |  |  | 39.88d | 0d |  | FRD | 8h |
| 36 | 4.8 | Pruebas en vacío |  | 2d | 2021-01-08 | 2021-01-12 | 35 |  |  |  | 39.88d | 0d |  | FRD | 16h |
| 37 | 4.9 | Pruebas "Barra fantasma" |  | 1d | 2021-01-12 | 2021-01-13 | 36 |  |  |  | 39.88d | 0d |  | FRD | 8h |
| 38 | 4.10 | Pruebas con material |  | 3d | 2021-01-13 | 2021-01-18 | 37 |  |  |  | 39.88d | 0d |  | FRD | 24h |
| 39 | 5 | **SOFTWARE SIMOTION 2** |  | 15d? | 2020-12-02 | 2020-12-29 |  | 2020-10-14 | 2020-12-09 | 35.38d? | 0d |  |  |  | 112h |
| 40 | 5.1 | Abrir y estudiar programa original de SH18BM |  | 1d | 2020-12-02 | 2020-12-03 | 26 | 2020-10-19 | 2020-10-20 | 4h | 0d |  | start no earlier than 2020-10-19 | FRD | 8h |
| 41 | 5.2 | Abrir y estudiar programa original de SH1B |  | 1d | 2020-12-03 | 2020-12-04 | 40 | 2020-10-20 | 2020-10-22 | 2d | 0d |  |  | FRD | 8h |
| 42 | 5.3 | Abrir y estudiar programa original de SH1B |  | 1d? | 2020-12-04 | 2020-12-09 | 41 |  |  |  | 0d |  |  |  |  |
| 43 | 5.4 | **Programación Simotion 2** |  | 12d | 2020-12-09 | 2020-12-29 | 42 | 2020-10-22 | 2020-12-09 | 29.38d? | 0d |  |  |  | 96h |
| 44 | 5.4.1 | Estudio y configuración doble comunicación |  | 1d | 2020-12-09 | 2020-12-10 |  | 2020-10-22 | 2020-10-23 | 1d | 0d |  |  | FRD | 8h |
| 45 | 5.4.2 | Configuración Hw |  | 1d | 2020-12-10 | 2020-12-11 | 44 | 2020-10-22 | 2020-10-23 | 1d | 0d |  |  | FRD | 8h |
| 46 | 5.4.3 | Definición estructura de programa |  | 1d | 2020-12-11 | 2020-12-14 | 45 | 2020-10-22 | 2020-10-23 | 1d | 0d |  |  | FRD | 8h |
| 47 | 5.4.4 | Programación Simotion 2 |  | 7d | 2020-12-14 | 2020-12-24 | 46 | 2020-10-23 | 2020-11-02 | 6d | 0d |  |  | FRD | 56h |
| 48 | 5.4.5 | Pruebas de software |  | 2d | 2020-12-24 | 2020-12-29 | 47 | 2020-12-02 | 2020-12-09 | 3d | 0d |  |  | FRD | 16h |
| 49 | 5.4.6 | Programa Simotion 2 OK | milestone | 0d | 2020-12-29 | 2020-12-29 | 48 | 2020-12-09 | 2020-12-09 | 0d | 0d |  |  |  |  |
| 50 | 6 | **PEM Simotion 2** |  | 12.81d | 2021-01-11 | 2021-01-28 |  | 2020-10-14 | 2020-12-14 | 38.38d | 45.19d |  |  |  | 84h |
| 51 | 6.1 | Montaje y conexionado |  | 2d | 2021-01-11 | 2021-01-13 |  | 2020-12-10 | 2020-12-14 | 2d | 63.69d | 0d | start no earlier than 2021-01-11 | CRJ | 16h |
| 52 | 6.2 | SAT |  | 1d | 2021-01-13 | 2021-01-14 | 51 | 2020-10-14 | 2020-10-15 | 1d | 63.69d |  |  | CRJ | 8h |
| 53 | 6.3 | Carga modificaciones PLC CS |  | 2h | 2021-01-18 | 2021-01-18 | 38, 49 | 2020-10-15 | 2020-10-15 | 2h | 39.88d | 0d |  | FRD | 2h |
| 54 | 6.4 | Pruebas comunicación PLC CS-Simotion 2 |  | 2h | 2021-01-19 | 2021-01-19 | 53 | 2020-10-15 | 2020-10-15 | 2h | 39.88d | 0d |  | FRD | 2h |
| 55 | 6.5 | Pruebas de movimientos Simotion |  | 1d | 2021-01-19 | 2021-01-20 | 54 |  |  |  | 39.88d | 0d |  | FRD | 8h |
| 56 | 6.6 | Pruebas en vacío |  | 2d | 2021-01-20 | 2021-01-22 | 55 |  |  |  | 39.88d | 0d |  | FRD | 16h |
| 57 | 6.7 | Pruebas "Barra fantasma" |  | 1d | 2021-01-22 | 2021-01-25 | 56 |  |  |  | 39.88d | 0d |  | FRD | 8h |
| 58 | 6.8 | Pruebas con material |  | 3d | 2021-01-25 | 2021-01-28 | 57 |  |  |  | 39.88d | 25d |  | FRD | 24h |

| ID | WBS | Task | Type | Duration | Start | Finish | Predecessors | Baseline start | Baseline finish | Baseline duration | Total slack | Free slack | Constraint | Resources | Work |
| --- | --- | --- | --- | --- | --- | --- | --- | --- | --- | --- | --- | --- | --- | --- | --- |
| 59 | 7 | **SOFTWARE SIMOTION 1** |  | 45d | 2020-12-29 | 2021-03-10 |  | 2020-10-14 | 2020-12-09 | 35.38d? | 0d |  |  |  | 104h |
| 60 | 7.1 | Abrir y estudiar programa original de SH6 |  | 1d | 2020-12-29 | 2020-12-30 | 49 | 2020-10-20 | 2020-10-22 | 2d | 0d |  |  | FRD | 8h |
| 61 | 7.2 | Abrir y estudiar programa original de SH12 |  | 1d | 2020-12-30 | 2020-12-31 | 60 |  |  |  | 0d |  |  |  |  |
| 62 | 7.3 | **Programación Simotion 1** |  | 43d | 2020-12-31 | 2021-03-10 | 61 | 2020-10-22 | 2020-12-09 | 29.38d? | 0d |  |  |  | 96h |
| 63 | 7.3.1 | Estudio y configuración doble comunicación |  | 1d | 2020-12-31 | 2021-01-04 |  | 2020-10-22 | 2020-10-23 | 1d | 0d |  |  | FRD | 8h |
| 64 | 7.3.2 | Configuración Hw |  | 1d | 2021-01-04 | 2021-01-05 | 63 | 2020-10-22 | 2020-10-23 | 1d | 0d |  |  | FRD | 8h |
| 65 | 7.3.3 | Definición estructura de programa |  | 1d | 2021-01-05 | 2021-01-29 | 64 | 2020-10-22 | 2020-10-23 | 1d | 0d |  |  | FRD | 8h |
| 66 | 7.3.4 | Programación Simotion1 |  | 7d | 2021-01-29 | 2021-03-08 | 65 | 2020-10-23 | 2020-11-02 | 6d | 0d |  |  | FRD | 56h |
| 67 | 7.3.5 | Pruebas de software |  | 2d | 2021-03-08 | 2021-03-10 | 66 | 2020-12-02 | 2020-12-09 | 3d | 0d |  |  | FRD | 16h |
| 68 | 7.3.6 | Programa Simotion 1 OK | milestone | 0d | 2021-03-10 | 2021-03-10 | 67 | 2020-12-09 | 2020-12-09 | 0d | 0d |  |  |  |  |
| 69 | 8 | **PEM Simotion 1** |  | 39.62d | 2021-01-18 | 2021-03-19 |  | 2020-10-14 | 2020-12-14 | 38.38d | 22.38d |  |  |  | 76h |
| 70 | 8.1 | Montaje y conexionado |  | 2d | 2021-01-18 | 2021-01-20 |  | 2020-12-10 | 2020-12-14 | 2d | 59d | 0d | start no earlier than 2021-01-18 | CRJ | 16h |
| 71 | 8.2 | SAT |  | 1d | 2021-01-20 | 2021-01-21 | 70 | 2020-10-14 | 2020-10-15 | 1d | 59d |  |  | CRJ | 8h |
| 72 | 8.3 | Carga modificaciones PLC CS |  | 2h | 2021-03-10 | 2021-03-10 | 68, 58 | 2020-10-15 | 2020-10-15 | 2h | 14.88d | 0d |  | FRD | 2h |
| 73 | 8.4 | Pruebas comunicación PLC CS-Simotion 1 |  | 2h | 2021-03-10 | 2021-03-10 | 72 | 2020-10-15 | 2020-10-15 | 2h | 14.88d | 0d |  | FRD | 2h |
| 74 | 8.5 | Pruebas de movimientos Simotion |  | 1d | 2021-03-10 | 2021-03-11 | 73 |  |  |  | 14.88d | 0d |  | FRD | 8h |
| 75 | 8.6 | Pruebas en vacío |  | 1d | 2021-03-12 | 2021-03-15 | 74 |  |  |  | 14.88d | 0d |  | FRD | 8h |
| 76 | 8.7 | Pruebas "Barra fantasma" |  | 1d | 2021-03-15 | 2021-03-16 | 75 |  |  |  | 14.88d | 0d |  | FRD | 8h |
| 77 | 8.8 | Pruebas con material |  | 3d | 2021-03-16 | 2021-03-19 | 76 |  |  |  | 14.88d |  |  | FRD | 24h |
| 78 | 9 | **SOFTWARE SIMOTION 3** |  | 13d | 2021-03-23 | 2021-04-14 |  | 2020-10-14 | 2020-12-09 | 35.38d? | 0d |  |  |  | 104h |
| 79 | 9.1 | Abrir y estudiar programa original de SH18RM |  | 1d | 2021-03-23 | 2021-03-25 | 68 | 2020-10-20 | 2020-10-22 | 2d | 0d |  |  | FRD | 8h |
| 80 | 9.2 | **Programación Simotion 1** |  | 12d | 2021-03-25 | 2021-04-14 |  | 2020-10-22 | 2020-12-09 | 29.38d? | 0d |  |  |  | 96h |
| 81 | 9.2.1 | Estudio y configuración doble comunicación |  | 1d | 2021-03-25 | 2021-03-26 | 79 | 2020-10-22 | 2020-10-23 | 1d | 0d |  |  | FRD | 8h |
| 82 | 9.2.2 | Configuración Hw |  | 1d | 2021-03-26 | 2021-03-29 | 81 | 2020-10-22 | 2020-10-23 | 1d | 0d |  |  | FRD | 8h |
| 83 | 9.2.3 | Definición estructura de programa |  | 1d | 2021-03-29 | 2021-03-30 | 82 | 2020-10-22 | 2020-10-23 | 1d | 0d |  |  | FRD | 8h |
| 84 | 9.2.4 | Programación Simotion1 |  | 7d | 2021-03-30 | 2021-04-12 | 83 | 2020-10-23 | 2020-11-02 | 6d | 0d |  |  | FRD | 56h |
| 85 | 9.2.5 | Pruebas de software |  | 2d | 2021-04-12 | 2021-04-14 | 84 | 2020-12-02 | 2020-12-09 | 3d | 0d |  |  | FRD | 16h |
| 86 | 9.2.6 | Programa Simotion 1 OK | milestone | 0d | 2021-04-14 | 2021-04-14 | 85 | 2020-12-09 | 2020-12-09 | 0d | 0d |  |  |  |  |

| ID | WBS | Task | Duration | Start | Finish | Predecessors | Baseline start | Baseline finish | Baseline duration | Total slack | Free slack | Constraint | Resources | Work |
| --- | --- | --- | --- | --- | --- | --- | --- | --- | --- | --- | --- | --- | --- | --- |
| 87 | 10 | **PEM Simotion 3** | 52.62d | 2021-02-01 | 2021-04-26 |  | 2020-10-14 | 2020-12-14 | 38.38d | 0d |  |  |  | 84h |
| 88 | 10.1 | Montaje y conexionado | 2d | 2021-02-01 | 2021-02-03 |  | 2020-12-10 | 2020-12-14 | 2d | 31.25d | 0d | start no earlier than 2021-02-01 | CRJ | 16h |
| 89 | 10.2 | SAT | 1d | 2021-02-03 | 2021-02-04 | 88 | 2020-10-14 | 2020-10-15 | 1d | 31.25d |  |  | CRJ | 8h |
| 90 | 10.3 | Carga modificaciones PLC CS | 2h | 2021-04-14 | 2021-04-14 | 86, 77 | 2020-10-15 | 2020-10-15 | 2h | 0d |  |  | FRD | 2h |
| 91 | 10.4 | Pruebas comunicación PLC CS-Simotion 1 | 2h | 2021-04-14 | 2021-04-14 | 90 | 2020-10-15 | 2020-10-15 | 2h | 0d |  |  | FRD | 2h |
| 92 | 10.5 | Pruebas de movimientos Simotion | 1d | 2021-04-14 | 2021-04-15 | 91 |  |  |  | 0d |  |  | FRD | 8h |
| 93 | 10.6 | Pruebas en vacío | 2d | 2021-04-15 | 2021-04-19 | 92 |  |  |  | 0d |  |  | FRD | 16h |
| 94 | 10.7 | Pruebas "Barra fantasma" | 1d | 2021-04-19 | 2021-04-20 | 93 |  |  |  | 0d |  |  | FRD | 8h |
| 95 | 10.8 | Pruebas con material | 3d | 2021-04-21 | 2021-04-26 | 94 |  |  |  | 0d |  |  | FRD | 24h |
