# XING_PRO320009_A0

Schedule from MS Project, 2020-10-14 to 2021-05-13, A marks actual dates.

## Calendars

- Base_FRD: Mon-Fri 08:30-12:00, 13:00-17:00; Sat-Sun off. Exceptions (off unless hours are given): 2020-11-23 (Soberanía Nacional), 2020-12-07 to 2020-12-08 (Feriado Turístico), 2020-12-25 (Navidad), 2021-01-01 (Año Nuevo), 2021-02-15 to 2021-02-16 (Carnaval), 2021-03-24 (Día de la Memoria), 2021-04-02 (Viernes Santo/Malvinas).

## Resources

| Resource |
| --- |
| PR_1 |
| ING_1 |
| COMP_1 |
| MTJ_1 |
| DIR_1 |
| ING_2 |
| CRL |
| PR_2 |

## Schedule

| ID | WBS | Task | Type | Duration | Start | Finish | Predecessors | Complete | Remaining | Baseline start | Baseline finish | Baseline duration | Total slack | Free slack | Constraint | Resources | Work | Actual work |
| --- | --- | --- | --- | --- | --- | --- | --- | --- | --- | --- | --- | --- | --- | --- | --- | --- | --- | --- |
| 1 | 1 | **Relevo Previo** |  | 41.25d | 2020-10-14 A | 2020-12-18 |  | 57% | 17.68d |  |  |  | 86.81d |  |  |  | 80h | 32h |
| 2 | 1.1 | Selección materiales principales (SIEMENS) | milestone | 0d | 2020-10-14 A | 2020-10-15 A |  | 100% |  | 2020-10-14 | 2020-10-16 | 2d |  |  |  | COMP_1 |  |  |
| 3 | 1.2 | Compra de materiales Siemens |  | 1d | 2020-10-15 A | 2020-10-16 A | 2 | 100% |  | 2020-10-16 | 2020-10-19 | 1d |  |  |  | COMP_1 | 8h | 8h |
| 4 | 1.3 | VISITA A PLANTA |  | 1d | 2020-11-04 | 2020-11-05 |  |  |  | 2020-10-28 | 2020-10-29 | 1d | 2d | 0d | start no earlier than 2020-11-04 | DIR_1; ING_1; PR_1; MTJ_1 | 32h |  |
| 5 | 1.4 | Selección materiales menores |  | 4d | 2020-11-05 A | 2020-11-11 | 4 | 50% | 2d | 2020-10-29 | 2020-11-03 | 3d | 2.75d | 0d |  | ING_1 | 32h | 16h |
| 6 | 1.5 | Compra materiales menores |  | 1d | 2020-11-11 A | 2020-11-12 A | 5 | 100% |  | 2020-11-03 | 2020-11-04 | 1d? |  |  |  | COMP_1 | 8h | 8h |
| 7 | 1.6 | Recepción materiales menores | milestone | 0d | 2020-11-30 | 2020-11-30 | 6 |  |  | 2020-11-19 | 2020-11-19 | 0d | 59.12d | 0d | start no earlier than 2020-11-30 |  |  |  |
| 8 | 1.7 | Recepción de materiales Siemens | milestone | 0d | 2020-12-18 | 2020-12-18 | 3 |  |  |  |  |  | 86.81d | 0d | start no earlier than 2020-12-18 |  |  |  |
| 9 | 2 | **INGENIERÍA/PLACA SIMOTION** |  | 27.88d | 2020-11-11 A | 2020-12-29 |  | 11% | 24.93d | 2020-10-14 | 2020-12-02 | 32.38d? | 86.75d |  |  |  | 248h | 22h |
| 10 | 2.1 | Confección de planos eléctricos |  | 11d | 2020-11-11 A | 2020-11-30 | 5 | 25% | 8.25d | 2020-11-19 | 2020-11-25 | 3d | 103.56d |  |  | ING_1 | 88h | 22h |
| 11 | 2.2 | Armado de tableros eléctricos con materiales menores |  | 10d | 2020-11-30 | 2020-12-16 | 7 |  |  | 2020-11-25 | 2020-12-01 | 4d | 59.12d | 4.25d | finish no earlier than 2020-12-09 | MTJ_1 | 80h |  |
| 12 | 2.3 | Montaje de materiales Siemens |  | 3d | 2020-12-18 | 2020-12-23 | 8 |  |  |  |  |  | 86.81d | 0d |  | MTJ_1; ING_1 | 48h |  |
| 13 | 2.4 | FAT |  | 1d | 2020-12-23 | 2020-12-24 | 11, 12 |  |  | 2020-12-01 | 2020-12-02 | 1d | 86.81d | 0d |  | MTJ_1; ING_1 | 16h |  |
| 14 | 2.5 | Placas Simotion OK | milestone | 0d | 2020-12-24 | 2020-12-24 | 13 |  |  | 2020-12-02 | 2020-12-02 | 0d | 86.81d | 0d |  | MTJ_1; ING_1 |  |  |
| 15 | 2.6 | Entrega placas Simotion |  | 1d | 2020-12-28 | 2020-12-29 | 28, 14 |  |  |  |  |  | 54.19d | 2.75d | start no earlier than 2020-12-28 | MTJ_1; ING_1 | 16h |  |
| 16 | 3 | **SOFTWARE SIMOTION 4** |  | 33.06d | 2020-11-02 A | 2020-12-24 |  | 10% | 29.76d | 2020-10-14 | 2020-12-09 | 35.38d? | 41.94d |  |  |  | 240h | 24h |
| 17 | 3.1 | Acondicionar versiones de software |  | 3d | 2020-11-02 A | 2020-11-06 A |  | 100% |  | 2020-10-14 | 2020-10-19 | 3d |  |  | start no earlier than 2020-11-02 | PR_1 | 24h | 24h |
| 18 | 3.2 | Abrir y estudiar programa original de BSL |  | 2d | 2020-11-06 | 2020-11-10 | 17 |  |  | 2020-10-19 | 2020-10-19 | 4h | 0d |  |  | PR_1 | 16h |  |
| 19 | 3.3 | Abrir y estudiar programa original de CS |  | 2d | 2020-11-10 | 2020-11-12 | 18 |  |  | 2020-10-19 | 2020-10-20 | 4h | 0d |  |  | PR_1 | 16h |  |
| 20 | 3.4 | Abrir y estudiar Programa ejemplo de Simotion |  | 5d | 2020-11-12 | 2020-11-19 | 19 |  |  | 2020-10-20 | 2020-10-22 | 2d | 0d |  |  | PR_1 | 40h |  |
| 21 | 3.5 | **Programación Simotion 4** |  | 20.06d | 2020-11-19 | 2020-12-24 | 20 |  |  | 2020-10-22 | 2020-12-09 | 29.38d? | 0d |  |  |  | 144h |  |
| 22 | 3.5.1 | Estudio y configuración doble comunicación |  | 2d | 2020-11-19 | 2020-11-25 |  |  |  | 2020-10-22 | 2020-10-23 | 1d | 0d |  |  | PR_1 | 16h |  |
| 23 | 3.5.2 | Configuración Hw |  | 1d | 2020-11-25 | 2020-11-26 | 22 |  |  | 2020-10-22 | 2020-10-23 | 1d | 0d |  |  | PR_1 | 8h |  |
| 24 | 3.5.3 | Definición estructura de programa |  | 1d | 2020-11-26 | 2020-11-27 | 23 |  |  | 2020-10-22 | 2020-10-23 | 1d | 0d |  |  | PR_1 | 8h |  |
| 25 | 3.5.4 | Programación Simotion 4 |  | 10d | 2020-11-27 | 2020-12-15 | 24 |  |  | 2020-10-23 | 2020-11-02 | 6d | 0d |  | finish no earlier than 2020-11-26 | PR_1 | 80h |  |
| 26 | 3.5.5 | Modificaciòn Programa s7-300 |  | 1d | 2020-12-15 | 2020-12-16 | 25 |  |  |  |  |  | 0d |  |  | PR_1 | 8h |  |
| 27 | 3.5.6 | Pruebas de software |  | 3d | 2020-12-16 | 2020-12-22 | 26 |  |  | 2020-12-02 | 2020-12-09 | 3d | 0d |  |  | PR_1 | 24h |  |
| 28 | 3.5.7 | Programa Simotion 4 OK | milestone | 0d | 2020-12-24 | 2020-12-24 | 14, 27 |  |  | 2020-12-09 | 2020-12-09 | 0d | 86.81d | 0.69d |  |  |  |  |

| ID | WBS | Task | Type | Duration | Start | Finish | Predecessors | Baseline start | Baseline finish | Baseline duration | Total slack | Free slack | Constraint | Resources | Work |
| --- | --- | --- | --- | --- | --- | --- | --- | --- | --- | --- | --- | --- | --- | --- | --- |
| 29 | 4 | **PEM Simotion 4** |  | 10d | 2021-01-04 | 2021-01-18 |  | 2020-10-14 | 2020-12-14 | 38.38d | 38.5d |  |  |  | 80h |
| 30 | 4.1 | Montaje y conexionado |  | 1d | 2021-01-04 | 2021-01-05 | 15 | 2020-12-10 | 2020-12-14 | 2d | 51.44d | 0d | start no earlier than 2021-01-04 | ING_1 | 8h |
| 31 | 4.2 | SAT |  | 1d | 2021-01-05 | 2021-01-06 | 30 | 2020-10-14 | 2020-10-15 | 1d | 83.38d | 0d |  | ING_1 | 8h |
| 32 | 4.3 | Carga modificaciones PLC BSL |  | 2h | 2021-01-06 | 2021-01-06 | 31 | 2020-10-15 | 2020-10-15 | 2h | 83.38d | 0d |  | PR_1 | 2h |
| 33 | 4.4 | Pruebas comunicación PLC BSL-Simotion 4 |  | 2h | 2021-01-06 | 2021-01-06 | 32 | 2020-10-15 | 2020-10-15 | 2h | 51.44d | 0d |  | PR_1 | 2h |
| 34 | 4.5 | Carga modificaciones PLC CS |  | 2h | 2021-01-06 | 2021-01-06 | 33 | 2020-10-15 | 2020-10-15 | 2h | 83.38d | 0d |  | PR_1 | 2h |
| 35 | 4.6 | Pruebas comunicación PLC CS-Simotion 4 |  | 2h | 2021-01-07 | 2021-01-07 | 34 | 2020-10-15 | 2020-10-15 | 2h | 51.44d | 0d |  | PR_1 | 2h |
| 36 | 4.7 | Pruebas de movimientos Simotion |  | 1d | 2021-01-07 | 2021-01-08 | 35 |  |  |  | 83.38d | 0d |  | PR_1 | 8h |
| 37 | 4.8 | Pruebas en vacío |  | 2d | 2021-01-08 | 2021-01-12 | 36 |  |  |  | 83.38d | 0d |  | PR_1 | 16h |
| 38 | 4.9 | Pruebas "Barra fantasma" |  | 1d | 2021-01-12 | 2021-01-13 | 37 |  |  |  | 51.44d | 0d |  | PR_1 | 8h |
| 39 | 4.10 | Pruebas con material |  | 3d | 2021-01-13 | 2021-01-18 | 38 |  |  |  | 83.38d | 18.5d |  | PR_1 | 24h |
| 40 | 5 | **SOFTWARE SIMOTION 2** |  | 35d | 2020-12-22 | 2021-02-17 |  | 2020-10-14 | 2020-12-09 | 35.38d? | 0d |  |  |  | 200h |
| 41 | 5.1 | Abrir y estudiar programa original de SH18BM |  | 2d | 2020-12-22 | 2020-12-24 | 27 | 2020-10-19 | 2020-10-20 | 4h | 0d |  | start no earlier than 2020-10-19 | PR_1 | 16h |
| 42 | 5.2 | Abrir y estudiar programa original de SH1B |  | 2d | 2020-12-24 | 2020-12-29 | 41 | 2020-10-20 | 2020-10-22 | 2d | 0d |  |  | PR_1 | 16h |
| 43 | 5.3 | Abrir y estudiar programa original de SH1B |  | 2d | 2020-12-29 | 2020-12-31 | 42 |  |  |  | 0d |  |  |  |  |
| 44 | 5.4 | **Programación Simotion 2** |  | 29d | 2020-12-31 | 2021-02-17 | 43 | 2020-10-22 | 2020-12-09 | 29.38d? | 0d |  |  |  | 168h |
| 45 | 5.4.1 | Estudio y configuración doble comunicación |  | 2d | 2020-12-31 | 2021-01-05 |  | 2020-10-22 | 2020-10-23 | 1d | 0d |  |  | PR_1 | 16h |
| 46 | 5.4.2 | Configuración Hw |  | 1d | 2021-01-05 | 2021-01-19 | 45 | 2020-10-22 | 2020-10-23 | 1d | 0d |  |  | PR_1 | 8h |
| 47 | 5.4.3 | Definición estructura de programa |  | 1d | 2021-01-19 | 2021-01-20 | 46 | 2020-10-22 | 2020-10-23 | 1d | 0d |  |  | PR_1 | 8h |
| 48 | 5.4.4 | Programación Simotion 2 |  | 15d | 2021-01-20 | 2021-02-11 | 47 | 2020-10-23 | 2020-11-02 | 6d | 0d |  |  | PR_1 | 120h |
| 49 | 5.4.5 | Pruebas de software |  | 2d | 2021-02-11 | 2021-02-17 | 48 | 2020-12-02 | 2020-12-09 | 3d | 0d |  |  | PR_1 | 16h |
| 50 | 5.4.6 | Programa Simotion 2 OK | milestone | 0d | 2021-02-17 | 2021-02-17 | 49 | 2020-12-09 | 2020-12-09 | 0d | 0d |  |  |  |  |
| 51 | 6 | **PEM Simotion 2** |  | 31.31d | 2021-01-11 | 2021-03-01 |  | 2020-10-14 | 2020-12-14 | 38.38d | 43.81d |  |  |  | 76h |
| 52 | 6.1 | Montaje y conexionado |  | 1d | 2021-01-11 | 2021-01-12 |  | 2020-12-10 | 2020-12-14 | 2d | 109.19d | 0d | start no earlier than 2021-01-11 | ING_1 | 8h |
| 53 | 6.2 | SAT |  | 1d | 2021-01-12 | 2021-01-13 | 52 | 2020-10-14 | 2020-10-15 | 1d | 109.19d |  |  | ING_1 | 8h |
| 54 | 6.3 | Carga modificaciones PLC |  | 2h | 2021-02-17 | 2021-02-17 | 39, 50 | 2020-10-15 | 2020-10-15 | 2h | 32.94d | 0d |  | PR_1 | 2h |
| 55 | 6.4 | Pruebas comunicación PLC-Simotion 2 |  | 2h | 2021-02-17 | 2021-02-17 | 54 | 2020-10-15 | 2020-10-15 | 2h | 32.94d | 0d |  | PR_1 | 2h |
| 56 | 6.5 | Pruebas de movimientos Simotion |  | 1d | 2021-02-18 | 2021-02-19 | 55 |  |  |  | 32.94d | 0d |  | PR_1 | 8h |
| 57 | 6.6 | Pruebas en vacío |  | 2d | 2021-02-19 | 2021-02-23 | 56 |  |  |  | 32.94d | 0d |  | PR_1 | 16h |
| 58 | 6.7 | Pruebas "Barra fantasma" |  | 1d | 2021-02-23 | 2021-02-24 | 57 |  |  |  | 32.94d | 0d |  | PR_1 | 8h |
| 59 | 6.8 | Pruebas con material |  | 3d | 2021-02-24 | 2021-03-01 | 58 |  |  |  | 32.94d | 20d |  | PR_1 | 24h |

| ID | WBS | Task | Type | Duration | Start | Finish | Predecessors | Baseline start | Baseline finish | Baseline duration | Total slack | Free slack | Constraint | Resources | Work |
| --- | --- | --- | --- | --- | --- | --- | --- | --- | --- | --- | --- | --- | --- | --- | --- |
| 60 | 7 | **SOFTWARE SIMOTION 1** |  | 20d | 2021-03-01 | 2021-03-31 |  | 2020-10-14 | 2020-12-09 | 35.38d? | 0d |  |  |  | 144h |
| 61 | 7.1 | Abrir y estudiar programa original de SH6 |  | 2d | 2021-03-01 | 2021-03-03 | 50 | 2020-10-20 | 2020-10-22 | 2d | 0d |  |  | PR_1 | 16h |
| 62 | 7.2 | Abrir y estudiar programa original de SH12 |  | 2d | 2021-03-03 | 2021-03-05 | 61 |  |  |  | 0d |  |  |  |  |
| 63 | 7.3 | **Programación Simotion 1** |  | 16d | 2021-03-05 | 2021-03-31 | 62 | 2020-10-22 | 2020-12-09 | 29.38d? | 0d |  |  |  | 128h |
| 64 | 7.3.1 | Estudio y configuración doble comunicación |  | 2d | 2021-03-05 | 2021-03-09 |  | 2020-10-22 | 2020-10-23 | 1d | 0d |  |  | PR_1 | 16h |
| 65 | 7.3.2 | Configuración Hw |  | 1d | 2021-03-09 | 2021-03-10 | 64 | 2020-10-22 | 2020-10-23 | 1d | 0d |  |  | PR_1 | 8h |
| 66 | 7.3.3 | Definición estructura de programa |  | 1d | 2021-03-10 | 2021-03-11 | 65 | 2020-10-22 | 2020-10-23 | 1d | 0d |  |  | PR_1 | 8h |
| 67 | 7.3.4 | Programación Simotion1 |  | 10d | 2021-03-12 | 2021-03-29 | 66 | 2020-10-23 | 2020-11-02 | 6d | 0d |  |  | PR_1 | 80h |
| 68 | 7.3.5 | Pruebas de software |  | 2d | 2021-03-29 | 2021-03-31 | 67 | 2020-12-02 | 2020-12-09 | 3d | 0d |  |  | PR_1 | 16h |
| 69 | 7.3.6 | Programa Simotion 1 OK | milestone | 0d | 2021-03-31 | 2021-03-31 | 68 | 2020-12-09 | 2020-12-09 | 0d | 0d |  |  |  |  |
| 70 | 8 | **PEM Simotion 1** |  | 54.12d | 2021-01-18 | 2021-04-13 |  | 2020-10-14 | 2020-12-14 | 38.38d | 20.5d |  |  |  | 76h |
| 71 | 8.1 | Montaje y conexionado |  | 1d | 2021-01-18 | 2021-01-19 |  | 2020-12-10 | 2020-12-14 | 2d | 104.5d | 0d | start no earlier than 2021-01-18 | ING_1 | 8h |
| 72 | 8.2 | SAT |  | 1d | 2021-01-19 | 2021-01-20 | 71 | 2020-10-14 | 2020-10-15 | 1d | 104.5d |  |  | ING_1 | 8h |
| 73 | 8.3 | Carga modificaciones PLC |  | 2h | 2021-03-31 | 2021-04-01 | 69, 59 | 2020-10-15 | 2020-10-15 | 2h | 0d |  |  | PR_1 | 2h |
| 74 | 8.4 | Pruebas comunicación PLC-Simotion 1 |  | 2h | 2021-04-01 | 2021-04-01 | 73 | 2020-10-15 | 2020-10-15 | 2h | 0d |  |  | PR_1 | 2h |
| 75 | 8.5 | Pruebas de movimientos Simotion |  | 1d | 2021-04-01 | 2021-04-05 | 74 |  |  |  | 0d |  |  | PR_1 | 8h |
| 76 | 8.6 | Pruebas en vacío |  | 2d | 2021-04-05 | 2021-04-07 | 75 |  |  |  | 0d |  |  | PR_1 | 16h |
| 77 | 8.7 | Pruebas "Barra fantasma" |  | 1d | 2021-04-07 | 2021-04-08 | 76 |  |  |  | 0d |  |  | PR_1 | 8h |
| 78 | 8.8 | Pruebas con material |  | 3d | 2021-04-08 | 2021-04-13 | 77 |  |  |  | 0d |  |  | PR_1 | 24h |
| 79 | 9 | **SOFTWARE SIMOTION 3** |  | 13d | 2021-04-13 | 2021-05-03 |  | 2020-10-14 | 2020-12-09 | 35.38d? | 0d |  |  |  | 104h |
| 80 | 9.1 | Abrir y estudiar programa original de SH18RM |  | 2d | 2021-04-13 | 2021-04-15 | 69, 78 | 2020-10-20 | 2020-10-22 | 2d | 0d |  |  | PR_1 | 16h |
| 81 | 9.2 | **Programación Simotion 3** |  | 11d | 2021-04-15 | 2021-05-03 |  | 2020-10-22 | 2020-12-09 | 29.38d? | 0d |  |  |  | 88h |
| 82 | 9.2.1 | Estudio y configuración doble comunicación |  | 2d | 2021-04-15 | 2021-04-20 | 80 | 2020-10-22 | 2020-10-23 | 1d | 0d |  |  | PR_1 | 16h |
| 83 | 9.2.2 | Configuración Hw |  | 1d | 2021-04-20 | 2021-04-21 | 82 | 2020-10-22 | 2020-10-23 | 1d | 0d |  |  | PR_1 | 8h |
| 84 | 9.2.3 | Definición estructura de programa |  | 1d | 2021-04-21 | 2021-04-22 | 83 | 2020-10-22 | 2020-10-23 | 1d | 0d |  |  | PR_1 | 8h |
| 85 | 9.2.4 | Programación Simotion |  | 5d | 2021-04-22 | 2021-04-29 | 84 | 2020-10-23 | 2020-11-02 | 6d | 0d |  |  | PR_1 | 40h |
| 86 | 9.2.5 | Pruebas de software |  | 2d | 2021-04-29 | 2021-05-03 | 85 | 2020-12-02 | 2020-12-09 | 3d | 0d |  |  | PR_1 | 16h |
| 87 | 9.2.6 | Programa Simotion 3 OK | milestone | 0d | 2021-05-03 | 2021-05-03 | 86 | 2020-12-09 | 2020-12-09 | 0d | 0d |  |  |  |  |

| ID | WBS | Task | Duration | Start | Finish | Predecessors | Baseline start | Baseline finish | Baseline duration | Total slack | Free slack | Constraint | Resources | Work |
| --- | --- | --- | --- | --- | --- | --- | --- | --- | --- | --- | --- | --- | --- | --- |
| 88 | 10 | **PEM Simotion 3** | 65.25d | 2021-02-01 | 2021-05-13 |  | 2020-10-14 | 2020-12-14 | 38.38d | 0d |  |  |  | 76h |
| 89 | 10.1 | Montaje y conexionado | 1d | 2021-02-01 | 2021-02-02 |  | 2020-12-10 | 2020-12-14 | 2d | 95.12d | 0d | start no earlier than 2021-02-01 | ING_1 | 8h |
| 90 | 10.2 | SAT | 1d | 2021-02-02 | 2021-02-03 | 89 | 2020-10-14 | 2020-10-15 | 1d | 95.12d |  |  | ING_1 | 8h |
| 91 | 10.3 | Carga modificaciones PLC | 2h | 2021-05-03 | 2021-05-03 | 87, 78 | 2020-10-15 | 2020-10-15 | 2h | 0d |  |  | PR_1 | 2h |
| 92 | 10.4 | Pruebas comunicación PLC-Simotion | 2h | 2021-05-03 | 2021-05-04 | 91 | 2020-10-15 | 2020-10-15 | 2h | 0d |  |  | PR_1 | 2h |
| 93 | 10.5 | Pruebas de movimientos Simotion | 1d | 2021-05-04 | 2021-05-05 | 92 |  |  |  | 0d |  |  | PR_1 | 8h |
| 94 | 10.6 | Pruebas en vacío | 2d | 2021-05-05 | 2021-05-07 | 93 |  |  |  | 0d |  |  | PR_1 | 16h |
| 95 | 10.7 | Pruebas "Barra fantasma" | 1d | 2021-05-07 | 2021-05-10 | 94 |  |  |  | 0d |  |  | PR_1 | 8h |
| 96 | 10.8 | Pruebas con material | 3d | 2021-05-10 | 2021-05-13 | 95 |  |  |  | 0d |  |  | PR_1 | 24h |
